# World_Stories_01

Schedule from MS Project, 2014-08-11 to 2014-10-29, A marks actual dates.
3dots

## Calendars

- Standard: Mon-Fri 08:00-12:00, 13:00-17:00; Sat-Sun off.

## Resources

| Resource | Group | Rate |
| --- | --- | --- |
| mim.Armand | Manager | 45 |
| Manager |  |  |
| 3D Artist |  |  |
| 2D Artist |  |  |
| Animator |  |  |
| Developer |  |  |
| Writer |  |  |
| Narator |  |  |
| Musician |  |  |

## Schedule

| ID | WBS | Task | Type | Duration | Start | Finish | Predecessors | Complete | Remaining | Total slack | Free slack |
| --- | --- | --- | --- | --- | --- | --- | --- | --- | --- | --- | --- |
| 1 | 1 | **R&D Steps** |  | 7d | 2014-08-11 A | 2014-08-19 |  | 22% | 5.44d | -6d | 0d |
| 2 | 1.1 | Music (available resources) |  | 1d | 2014-08-11 | 2014-08-11 |  |  |  | -1d | 0d |
| 3 | 1.2 | FBX compatible rigging options (+Unity humanoid) |  | 1d | 2014-08-11 A | 2014-08-11 A | 2 | 100% |  |  |  |
| 4 | 1.3 | Engine selection |  | 1d | 2014-08-11 A | 2014-08-11 A | 3 | 100% |  |  |  |
| 5 | 1.4 | multiplayer |  | 1d | 2014-08-12 | 2014-08-12 | 4 |  |  | -7d | 0d |
| 6 | 1.5 | Native (IOS, Android, WP8) achievement and award system |  | 1d | 2014-08-13 | 2014-08-13 | 5 |  |  | -7d | 0d |
| 7 | 1.6 | Architecture/ structure definitions (asset management structure) |  | 1d | 2014-08-14 | 2014-08-14 | 6 |  |  | -7d | 0d |
| 8 | 1.7 | Weekly deadline definitions |  | 1d | 2014-08-15 | 2014-08-15 | 7 |  |  | -7d | 0d |
| 9 | 1.8 | Preparing of the data sheet of requirements (like size limit, etc.) for each of the platform submissions. |  | 0.5d | 2014-08-18 | 2014-08-18 | 8 |  |  | -7d | 0d |
| 10 | 1.9 | Visual effects and real-time render passes available on mobile platforms |  | 0.5d | 2014-08-18 | 2014-08-18 | 9 |  |  | -7d | 0d |
| 11 | 1.10 | In-App purchase |  | 1d | 2014-08-19 | 2014-08-19 | 10 |  |  | -7d | 0d |
| 12 | 2 | **Alpha releases (1 story)** |  | 38.23d | 2014-08-11 A | 2014-10-02 | 1 | 5% | 36.4d | 0d |  |
| 13 | 2.1 | **Pre-production** |  | 13.1d | 2014-08-11 A | 2014-08-28 |  | 13% | 11.42d | -6.1d | 0d |
| 14 | 2.1.1 | Script |  | 1d | 2014-08-11 A | 2014-08-20 |  | 90% | 0.1d | -6.1d | 0d |
| 15 | 2.1.2 | Story boards |  | 1d | 2014-08-20 | 2014-08-21 | 14 |  |  | -6.1d | 0d |
| 16 | 2.1.3 | Concept / Mood Paintings |  | 2d | 2014-08-21 | 2014-08-25 | 15 |  |  | -6.1d | 0d |
| 17 | 2.1.4 | Animation mockup (2D) |  | 1d | 2014-08-27 | 2014-08-28 | 16, 18 |  |  | -6.1d | 0d |
| 18 | 2.1.5 | Music (test) |  | 1d | 2014-08-26 | 2014-08-27 | 19 |  |  | -6.1d | 0d |
| 19 | 2.1.6 | Naration (test) |  | 1d | 2014-08-25 | 2014-08-26 | 16 |  |  | -6.1d | 0d |
| 20 | 2.1.7 | Trailer (Alpha) | milestone | 0d | 2014-08-28 | 2014-08-28 | 17 |  |  | -6.1d | 0d |
| 21 | 2.2 | **Production** |  | 31.23d | 2014-08-20 A | 2014-10-02 | 13 | 3% | 30.32d | 0d |  |
| 22 | 2.2.1 | Blueprints |  | 2d | 2014-08-20 A | 2014-08-29 |  | 12% | 1.76d | 0d |  |
| 23 | 2.2.2 | 3D Modeling |  | 1d | 2014-08-22 A | 2014-09-01 | 22 | 15% | 0.85d | 0d |  |
| 24 | 2.2.3 | UW & Texturing |  | 3d | 2014-08-25 A | 2014-09-04 | 23 | 12% | 2.64d | 0d |  |
| 25 | 2.2.4 | Rigging |  | 2d | 2014-08-28 A | 2014-09-08 | 24 | 6% | 1.88d | 0d |  |
| 26 | 2.2.5 | Animation |  | 1d | 2014-09-08 | 2014-09-09 | 25 |  |  | 0d |  |

| ID | WBS | Task | Type | Duration | Start | Finish | Predecessors | Total slack | Free slack |
| --- | --- | --- | --- | --- | --- | --- | --- | --- | --- |
| 27 | 2.2.6 | **Sounds** |  | 3d | 2014-08-28 | 2014-09-02 |  | 21.13d | 5.13d |
| 28 | 2.2.6.1 | Sound fx |  | 1d | 2014-08-28 | 2014-08-29 |  | 21.13d | 0d |
| 29 | 2.2.6.2 | Musics |  | 1d | 2014-08-29 | 2014-09-01 | 28 | 21.13d | 0d |
| 30 | 2.2.6.3 | Narations |  | 1d | 2014-09-01 | 2014-09-02 | 29 | 21.13d |  |
| 31 | 2.2.7 | Trailer release |  | 1d | 2014-09-09 | 2014-09-10 | 26, 27 | 16d |  |
| 32 | 2.2.8 | **Unity dev** |  | 12d | 2014-09-09 | 2014-09-25 | 26 | 0d |  |
| 33 | 2.2.8.1 | Game logic |  | 1d | 2014-09-09 | 2014-09-10 |  | 0d |  |
| 34 | 2.2.8.2 | Importing assets |  | 1d | 2014-09-10 | 2014-09-11 | 33 | 0d |  |
| 35 | 2.2.8.3 | GUI Design + dev |  | 2d | 2014-09-11 | 2014-09-15 | 34 | 0d |  |
| 36 | 2.2.8.4 | Programming |  | 7d | 2014-09-15 | 2014-09-24 | 35 | 0d |  |
| 37 | 2.2.8.5 | Alpha builds |  | 1d | 2014-09-24 | 2014-09-25 | 36 | 0d |  |
| 38 | 2.2.9 | Primary test on devices |  | 1d | 2014-09-25 | 2014-09-26 | 32 | 0d |  |
| 39 | 2.2.10 | Debugging | manual | 2d | 2014-09-26 | 2014-09-30 | 38 |  |  |
| 40 | 2.2.11 | Market place submissions |  | 1d | 2014-09-30 | 2014-10-01 | 39 | 0d |  |
| 41 | 2.2.12 | Debugging / resubmitting | manual | 1d | 2014-10-01 | 2014-10-02 | 40 |  |  |
| 42 | 2.2.13 | Alpha 2 release + Trailler | milestone | 0d | 2014-10-02 | 2014-10-02 | 41 | 0d |  |
| 43 | 3 | **Funds** |  | 19d | 2014-10-02 | 2014-10-29 | 12 | 0d |  |
| 44 | 3.1 | Research, studies, planning |  | 2d | 2014-10-02 | 2014-10-06 |  | 17d |  |
| 45 | 3.2 | **Content creation** |  | 14d | 2014-10-02 | 2014-10-22 |  | 0d |  |
| 46 | 3.2.1 | Text |  | 2d | 2014-10-02 | 2014-10-06 |  | 0d |  |
| 47 | 3.2.2 | Images |  | 3d | 2014-10-06 | 2014-10-09 | 46 | 0d |  |
| 48 | 3.2.3 | Scripts |  | 2d | 2014-10-09 | 2014-10-13 | 47 | 0d |  |
| 49 | 3.2.4 | Filming sessions |  | 2d | 2014-10-13 | 2014-10-15 | 48 | 0d |  |
| 50 | 3.2.5 | FX + Editing |  | 2d | 2014-10-15 | 2014-10-17 | 49 | 0d |  |
| 51 | 3.2.6 | Formatting |  | 2d | 2014-10-17 | 2014-10-21 | 50 | 0d |  |
| 52 | 3.2.7 | Final preparations |  | 1d | 2014-10-21 | 2014-10-22 | 51 | 0d |  |
| 53 | 3.3 | Submitions |  | 2d | 2014-10-22 | 2014-10-24 | 45 | 3d |  |
| 54 | 3.4 | Advertising, social networks, etc |  | 5d | 2014-10-22 | 2014-10-29 | 45 | 0d |  |

| ID | WBS | Task | Type | Duration | Start | Finish | Predecessors | Total slack | Free slack |
| --- | --- | --- | --- | --- | --- | --- | --- | --- | --- |
| 55 | 3.5 | **Private fundings** |  | 11d | 2014-10-02 | 2014-10-17 |  | 8d |  |
| 56 | 3.5.1 | Research & planning |  | 3d | 2014-10-02 | 2014-10-07 |  | 8d | 0d |
| 57 | 3.5.2 | Proposal preparations |  | 5d | 2014-10-07 | 2014-10-14 | 56 | 8d | 0d |
| 58 | 3.5.3 | Submission/ communications |  | 3d | 2014-10-14 | 2014-10-17 | 57 | 8d |  |
| 59 | 4 | **Beta release** |  | 1d | 2014-08-11 | 2014-08-11 |  | 0d |  |
| 60 | 4.1 | <New Task> | manual | 1d | 2014-08-11 | 2014-08-11 |  |  |  |
| 61 | 5 | **Final Release (V1)** |  | 1d | 2014-08-11 | 2014-08-11 |  | 0d |  |
| 62 | 5.1 | <New Task> | manual | 1d | 2014-08-11 | 2014-08-11 |  |  |  |
| 63 | 6 | **Side Products** |  | 1d? | 2014-08-11 | 2014-08-11 |  | 56.23d |  |
| 64 | 6.1 | Postal & Thank-you cards |  | 1d? | 2014-08-11 | 2014-08-11 |  | 56.23d |  |
| 65 | 6.2 | Stickers |  | 1d? | 2014-08-11 | 2014-08-11 |  | 56.23d |  |
| 66 | 6.3 | Coupons and promotion cards |  | 1d? | 2014-08-11 | 2014-08-11 |  | 56.23d |  |
| 67 | 6.4 | Card-board models |  | 1d? | 2014-08-11 | 2014-08-11 |  | 56.23d |  |
| 68 | 6.5 | Silk-screen |  | 1d | 2014-08-11 | 2014-08-11 |  | 56.23d |  |
